# AlcancePasivos.v.1.0

How a schedule from MS Project changed from version to version. A marks actual dates.

## Version 1 (saved 2017-01-25, file AlcancePasivos.v.1.0.mpp)

| ID | WBS | Task | Duration | Start | Finish | Predecessors | Total float | Constraint |
| --- | --- | --- | --- | --- | --- | --- | --- | --- |
| 1 | 1 | **Pasivos** | 40d | 2017-02-01 | 2017-03-28 |  | 0d |  |
| 2 | 1.1 | **Análisis** | 4d | 2017-02-01 | 2017-02-06 |  | 0d |  |
| 3 |  | Análisis del proceso actual y optimización | 3d | 2017-02-01 | 2017-02-03 |  | 0d |  |
| 4 |  | Generar documento especificación funcional (DEF) | 1d | 2017-02-06 | 2017-02-06 | 3 | 0d |  |
| 5 | 1.2 | **Desarrollo** | 36d | 2017-02-07 | 2017-03-28 |  | 0d |  |
| 6 |  | Cambio front-end | 2d | 2017-02-07 | 2017-02-08 | 4 | 0d |  |
| 7 |  | Tablero de filtro post carga stock_bf | 4d | 2017-02-09 | 2017-02-14 | 6 | 0d |  |
| 8 | 1.2.3 | **Cambios CTS actual** | 11.5d | 2017-02-15 | 2017-03-02 |  | 0d |  |
| 9 |  | Análisis stock_bf y columnas actuales | 2d | 2017-02-15 | 2017-02-16 | 7 | 0d |  |
| 10 |  | Validación origen de datos para CORP y EXT | 1d | 2017-02-17 | 2017-02-17 | 9 | 0d |  |
| 11 |  | Modificación procedimiento para árbol de decisiones SOLES | 2d | 2017-02-20 | 2017-02-21 | 10 | 0d | finish no earlier than 2017-02-01 |
| 12 |  | Modificación procedimiento para árbol de decisiones DÓLARES | 2d | 2017-02-22 | 2017-02-23 | 11 | 0d |  |
| 13 |  | Análisis de columnas extras para salida CTS | 2d | 2017-02-24 | 2017-02-27 | 12 | 0d |  |
| 14 |  | Optimización de reporte salida CTS | 1d | 2017-02-28 | 2017-02-28 | 13 | 0d | finish no earlier than 2017-02-02 |
| 15 |  | Pruebas y validación de datos | 1d | 2017-03-01 | 2017-03-01 | 14 | 0d |  |
| 16 |  | Despliegue de la solución | 0.5d | 2017-03-02 | 2017-03-02 | 15 | 0d |  |
| 17 |  | Sprint 1 | 0d | 2017-03-02 | 2017-03-02 | 16 | 0d |  |
| 18 | 1.2.5 | **CTS Nuevo** | 11.5d | 2017-03-02 | 2017-03-17 |  | 0d |  |
| 19 |  | Carga Registro de prod y tasas CTS | 1d | 2017-03-02 | 2017-03-03 | 17 | 0d |  |
| 20 |  | Mantenimiento Registro de prod y tasas CTS | 2d | 2017-03-03 | 2017-03-07 | 19 | 0d | finish no earlier than 2017-02-02 |
| 21 |  | Modificación procedimiento para árbol de decisiones SOLES | 2d | 2017-03-07 | 2017-03-09 | 20 | 0d | finish no earlier than 2017-02-01 |
| 22 |  | Modificación procedimiento para árbol de decisiones DÓLARES | 2d | 2017-03-09 | 2017-03-13 | 21 | 0d |  |
| 23 |  | Análisis de columnas extras para salida CTS | 1d | 2017-03-13 | 2017-03-14 | 22 | 0d |  |
| 24 |  | Optimización de reporte salida CTS | 2d | 2017-03-14 | 2017-03-16 | 23 | 0d | finish no earlier than 2017-02-02 |
| 25 |  | Pruebas y validación de datos | 1d | 2017-03-16 | 2017-03-17 | 24 | 0d |  |
| 26 |  | Despliegue de la solución | 0.5d | 2017-03-17 | 2017-03-17 | 25 | 0d |  |
| 27 |  | Sprint 2 | 0d | 2017-03-17 | 2017-03-17 | 26 | 0d |  |
| 28 | 1.2.7 | **Pruebas y validación de datos** | 7d | 2017-03-20 | 2017-03-28 |  | 0d |  |
| 29 |  | Despliegue e implementación servidor BI | 1d | 2017-03-20 | 2017-03-20 | 27 | 0d |  |
| 30 |  | Pruebas validación usuario final | 5d | 2017-03-21 | 2017-03-27 | 29 | 0d |  |
| 31 |  | Manual de usuario e implementación de procesos | 1d | 2017-03-28 | 2017-03-28 | 30 | 0d |  |
| 32 | 2 | **Gestión del proyecto** | 39d | 2017-02-01 | 2017-03-27 |  | 1d |  |
| 33 |  | Reunión de Inicio | 1d | 2017-02-01 | 2017-02-01 |  | 1d |  |
| 34 |  | Seguimiento y control | 37d | 2017-02-02 | 2017-03-24 | 33 | 1d |  |
| 35 |  | Cierre | 1d | 2017-03-27 | 2017-03-27 | 34 | 1d |  |

## Version 2 (saved 2017-02-12, file AlcancePasivos.v.2.0.mpp)

Last finish 2017-03-28 → 2017-03-31 (+3d). Complete tasks 0 → 4.

Added:

| ID | Task | Duration | Start | Finish | Predecessors | Resources |
| --- | --- | --- | --- | --- | --- | --- |
| 8 | Mantenimiento de asignación de productos | 2d | 2017-02-16 | 2017-02-17 | 7 | DEV1 |

Changed:

| ID | Task | Start | Finish | Duration | Complete | Total float | Predecessors | Other |
| --- | --- | --- | --- | --- | --- | --- | --- | --- |
| 1 | **Pasivos** | 2017-02-01 → 2017-02-06 A (+5d) | 2017-03-28 → 2017-03-31 (+3d) |  | 0% → 22% |  |  |  |
| 2 | **Análisis** | 2017-02-01 → 2017-02-06 A (+5d) | 2017-02-06 → 2017-02-09 A (+3d) |  | 0% → 100% | 0d → none |  |  |
| 3 | Análisis del proceso actual y optimización | 2017-02-01 → 2017-02-06 A (+5d) | 2017-02-03 → 2017-02-08 A (+5d) |  | 0% → 100% | 0d → none |  |  |
| 4 | Generar documento especificación funcional (DEF) | 2017-02-06 → 2017-02-09 A (+3d) | 2017-02-06 → 2017-02-09 A (+3d) |  | 0% → 100% | 0d → none |  |  |
| 5 | **Desarrollo** | 2017-02-07 → 2017-02-10 A (+3d) | 2017-03-28 → 2017-03-31 (+3d) |  | 0% → 14% |  |  |  |
| 6 | Cambio front-end | 2017-02-07 → 2017-02-10 A (+3d) | 2017-02-08 → 2017-02-14 A (+6d) | 2d → 3d | 0% → 100% | 0d → none |  |  |
| 7 | Mantenimiento de productos | 2017-02-09 → 2017-02-14 A (+5d) | 2017-02-14 → 2017-02-15 A (+1d) | 4d → 2d | 0% → 100% | 0d → none |  | was named Tablero de filtro post carga stock_bf |
| 9 | **Cambios CTS actual** | 2017-02-15 → 2017-02-20 (+5d) | 2017-03-02 → 2017-03-07 (+5d) |  |  |  |  |  |
| 10 | Análisis stock_bf y columnas actuales | 2017-02-15 → 2017-02-20 (+5d) | 2017-02-16 → 2017-02-21 (+5d) |  |  |  | 7 → 8 |  |
| 11 | Validación origen de datos para CORP y EXT | 2017-02-17 → 2017-02-22 (+5d) | 2017-02-17 → 2017-02-22 (+5d) |  |  |  |  |  |
| 12 | Modificación procedimiento para árbol de decisiones SOLES | 2017-02-20 → 2017-02-23 (+3d) | 2017-02-21 → 2017-02-24 (+3d) |  |  |  |  |  |
| 13 | Modificación procedimiento para árbol de decisiones DÓLARES | 2017-02-22 → 2017-02-27 (+5d) | 2017-02-23 → 2017-02-28 (+5d) |  |  |  |  |  |
| 14 | Análisis de columnas extras para salida CTS | 2017-02-24 → 2017-03-01 (+5d) | 2017-02-27 → 2017-03-02 (+3d) |  |  |  |  |  |
| 15 | Optimización de reporte salida CTS | 2017-02-28 → 2017-03-03 (+3d) | 2017-02-28 → 2017-03-03 (+3d) |  |  |  |  |  |
| 16 | Pruebas y validación de datos | 2017-03-01 → 2017-03-06 (+5d) | 2017-03-01 → 2017-03-06 (+5d) |  |  |  |  |  |
| 17 | Despliegue de la solución | 2017-03-02 → 2017-03-07 (+5d) | 2017-03-02 → 2017-03-07 (+5d) |  |  |  |  |  |
| 18 | Sprint 1 | 2017-03-02 → 2017-03-07 (+5d) | 2017-03-02 → 2017-03-07 (+5d) |  |  |  |  |  |
| 19 | **CTS Nuevo** | 2017-03-02 → 2017-03-07 (+5d) | 2017-03-17 → 2017-03-22 (+5d) |  |  |  |  |  |
| 20 | Carga Registro de prod y tasas CTS | 2017-03-02 → 2017-03-07 (+5d) | 2017-03-03 → 2017-03-08 (+5d) |  |  |  |  |  |
| 21 | Mantenimiento Registro de prod y tasas CTS | 2017-03-03 → 2017-03-08 (+5d) | 2017-03-07 → 2017-03-10 (+3d) |  |  |  |  |  |
| 22 | Modificación procedimiento para árbol de decisiones SOLES | 2017-03-07 → 2017-03-10 (+3d) | 2017-03-09 → 2017-03-14 (+5d) |  |  |  |  |  |
| 23 | Modificación procedimiento para árbol de decisiones DÓLARES | 2017-03-09 → 2017-03-14 (+5d) | 2017-03-13 → 2017-03-16 (+3d) |  |  |  |  |  |
| 24 | Análisis de columnas extras para salida CTS | 2017-03-13 → 2017-03-16 (+3d) | 2017-03-14 → 2017-03-17 (+3d) |  |  |  |  |  |
| 25 | Optimización de reporte salida CTS | 2017-03-14 → 2017-03-17 (+3d) | 2017-03-16 → 2017-03-21 (+5d) |  |  |  |  |  |
| 26 | Pruebas y validación de datos | 2017-03-16 → 2017-03-21 (+5d) | 2017-03-17 → 2017-03-22 (+5d) |  |  |  |  |  |
| 27 | Despliegue de la solución | 2017-03-17 → 2017-03-22 (+5d) | 2017-03-17 → 2017-03-22 (+5d) |  |  |  |  |  |
| 28 | Sprint 2 | 2017-03-17 → 2017-03-22 (+5d) | 2017-03-17 → 2017-03-22 (+5d) |  |  |  |  |  |
| 29 | **Pruebas y validación de datos** | 2017-03-20 → 2017-03-23 (+3d) | 2017-03-28 → 2017-03-31 (+3d) |  |  |  |  |  |
| 30 | Despliegue e implementación servidor BI | 2017-03-20 → 2017-03-23 (+3d) | 2017-03-20 → 2017-03-23 (+3d) |  |  |  |  |  |
| 31 | Pruebas validación usuario final | 2017-03-21 → 2017-03-24 (+3d) | 2017-03-27 → 2017-03-30 (+3d) |  |  |  |  |  |
| 32 | Manual de usuario e implementación de procesos | 2017-03-28 → 2017-03-31 (+3d) | 2017-03-28 → 2017-03-31 (+3d) |  |  |  |  |  |
